# infinity-beer

How a schedule from ProjectLibre changed from version to version. A marks actual dates.

## Version 1 (saved 2022-01-21)

Note of the change: criacao do projeto

| ID | WBS | Task | Duration | Start | Finish | Predecessors |
| --- | --- | --- | --- | --- | --- | --- |
| 1 | 1 | **Criação Cervejeira Automatizada** | 167d | 2022-01-21 | 2022-09-21 |  |
| 2 | 1.1 | **1 - Definição do Projeto** | 5d | 2022-01-21 | 2022-01-27 |  |
| 3 |  | Desenho do escopo do projeto | 3d | 2022-01-21 | 2022-01-25 |  |
| 4 |  | Levantamento de recursos | 1d | 2022-01-26 | 2022-01-26 | 3 |
| 5 |  | Definição de tarefas e prazos | 1d | 2022-01-27 | 2022-01-27 | 4 |
| 6 | 1.2 | **2 - Implementação** | 145d | 2022-01-28 | 2022-08-29 |  |
| 7 |  | Aquisição de Cervejeiras e materiais de IOT | 7d | 2022-01-28 | 2022-02-07 | 5 |
| 8 |  | Aluguel de Data Centers | 1d | 2022-02-08 | 2022-02-08 | 7 |
| 9 |  | Montagem do protótipo | 7d | 2022-02-09 | 2022-02-17 | 8 |
| 10 |  | Desenvolvimento do Back-end | 60d | 2022-02-18 | 2022-05-20 | 9 |
| 11 |  | Desenvolvimento do Front-end | 60d | 2022-05-23 | 2022-08-15 | 10 |
| 12 |  | Treinamento da IA | 7d | 2022-08-16 | 2022-08-24 | 11 |
| 13 |  | Testes internos de precisão | 3d | 2022-08-25 | 2022-08-29 | 12 |
| 14 | 1.3 | **3 - Implantação** | 17d | 2022-08-30 | 2022-09-21 |  |
| 15 |  | Documentação | 2d | 2022-08-30 | 2022-08-31 | 13 |
| 16 |  | Publicação do Software | 1d | 2022-09-01 | 2022-09-01 | 15 |
| 17 |  | Fabricação em Larga Escala | 14d | 2022-09-02 | 2022-09-21 | 16 |

## Version 2 (saved 2022-01-25)

Note of the change: alocacao de recursos

Last finish 2022-09-21 → 2022-08-22 (-30d).

Changed:

| ID | Task | Start | Finish | Duration | Other |
| --- | --- | --- | --- | --- | --- |
| 1 | **Criação Cervejeira Automatizada** |  | 2022-09-21 → 2022-08-22 (-30d) | 167d → 145d |  |
| 2 | **1 - Definição do Projeto** |  | 2022-01-27 → 2022-01-24 (-3d) | 5d → 2d |  |
| 3 | Desenho do escopo do projeto |  | 2022-01-25 → 2022-01-21 (-4d) | 3d → 1d | resources none → Project Owner; Vinícius Bandeira; Eduardo Candido |
| 4 | Levantamento de recursos | 2022-01-26 → 2022-01-24 (-2d) | 2022-01-26 → 2022-01-24 (-2d) | 1d → 0.5d | resources none → Eduardo Candido; Vinícius Bandeira |
| 5 | Definição de tarefas e prazos | 2022-01-27 → 2022-01-24 (-3d) | 2022-01-27 → 2022-01-24 (-3d) | 1d → 0.5d | resources none → Vinícius Bandeira; Eduardo Candido |
| 6 | **2 - Implementação** | 2022-01-28 → 2022-01-25 (-3d) | 2022-08-29 → 2022-07-29 (-31d) | 145d → 127d |  |
| 7 | Aquisição de Cervejeiras e materiais de IOT | 2022-01-28 → 2022-01-25 (-3d) | 2022-02-07 → 2022-01-28 (-10d) | 7d → 4d | resources none → Loja de Geladeira [300%]; Dispositivos IOT [300%] |
| 8 | Aquisição de Data Centers | 2022-02-08 → 2022-01-31 (-8d) | 2022-02-08 → 2022-01-31 (-8d) |  | was named Aluguel de Data Centers; resources none → Data Center |
| 9 | Montagem do protótipo | 2022-02-09 → 2022-02-01 (-8d) | 2022-02-17 → 2022-02-04 (-13d) | 7d → 4d | resources none → Montador do Protótipo |
| 10 | Desenvolvimento do Back-end | 2022-02-18 → 2022-02-07 (-11d) | 2022-05-20 → 2022-04-29 (-21d) |  | resources none → Equipe de Programadores |
| 11 | Desenvolvimento do Front-end | 2022-05-23 → 2022-05-02 (-21d) | 2022-08-15 → 2022-07-22 (-24d) |  | resources none → Equipe de Programadores |
| 12 | Treinamento da IA | 2022-08-16 → 2022-07-25 (-22d) | 2022-08-24 → 2022-07-28 (-27d) | 7d → 3.5d | resources none → Vinícius Bandeira; Eduardo Candido |
| 13 | Testes internos de precisão | 2022-08-25 → 2022-07-28 (-28d) | 2022-08-29 → 2022-07-29 (-31d) | 3d → 1.5d | resources none → Eduardo Candido; Vinícius Bandeira |
| 14 | **3 - Implantação** | 2022-08-30 → 2022-08-01 (-29d) | 2022-09-21 → 2022-08-22 (-30d) | 17d → 16d |  |
| 15 | Documentação | 2022-08-30 → 2022-08-01 (-29d) | 2022-08-31 → 2022-08-01 (-30d) | 2d → 1d | resources none → Vinícius Bandeira; Eduardo Candido |
| 16 | Publicação do Software | 2022-09-01 → 2022-08-02 (-30d) | 2022-09-01 → 2022-08-02 (-30d) |  | resources none → Equipe de Programadores |
| 17 | Fabricação em Larga Escala | 2022-09-02 → 2022-08-03 (-30d) | 2022-09-21 → 2022-08-22 (-30d) |  | resources none → Montador do Protótipo |

## Version 3 (saved 2022-01-27)

Note of the change: analise do projeto final

Last finish 2022-08-22 → 2022-05-09 (-105d).

Added:

| ID | Task | Duration | Start | Finish | Predecessors | Resources |
| --- | --- | --- | --- | --- | --- | --- |
| 14 | Criação do aplicativo mobile | 35d | 2022-02-18 | 2022-04-07 | 13 | Computador; Programador |
| 15 | **2.2.2 - Back-end** | 31d | 2022-02-09 | 2022-03-23 |  |  |
| 16 | Criação do banco de dados dentro da AWS | 2d | 2022-02-09 | 2022-02-10 | 5, 8 | Analista; Computador; Data Center |
| 18 | Estruturação da arquitetura serverless com AWS EventBridge | 7d | 2022-02-23 | 2022-03-03 | 17 | Programador; Computador; Data Center |
| 19 | Estabelecendo comunicação com AWS Lambda | 7d | 2022-03-04 | 2022-03-14 | 18 | Programador; Computador; Data Center |
| 20 | Criação de evento para nível baixo da cervejeira | 7d | 2022-03-15 | 2022-03-23 | 19 | Programador; Computador; Data Center |
| 21 | Vinculação do Back-end e Front-end | 4d | 2022-04-08 | 2022-04-13 | 14, 20 | Estagiário [50%]; Analista [50%]; Computador |
| 22 | **2.2.3 - Montagem e Treinamento** | 65d | 2022-01-26 | 2022-04-26 |  |  |
| 23 | Montagem do protótipo da cervejeira | 3d | 2022-01-26 | 2022-01-28 |  | Montador; Cervejeira; Roteador; Câmera [300%]; Vinícius Bandeira [20%]; Eduardo Candido [20%] |
| 24 | Treinamento de IA para as câmeras | 7d | 2022-04-14 | 2022-04-22 | 23, 21 | Vinícius Bandeira [20%]; Eduardo Candido [20%]; Estagiário; Analista [30%]; Computador |
| 25 | Teste de precisão da IA | 1d | 2022-04-25 | 2022-04-25 | 24 | Vinícius Bandeira [23.33%]; Analista [58.33%]; Estagiário [58.33%]; Computador; Cervejeira; Data Center |
| 26 | Teste de notificação de nível baixo da cervejeira | 1d | 2022-04-26 | 2022-04-26 | 25 | Cervejeira; Programador [25%]; Eduardo Candido [25%]; Estagiário [50%] |
| 30 | Fim do projeto | 0d | 2022-05-09 | 2022-05-09 | 29, 28 | Vinícius Bandeira; Eduardo Candido; Project Owner |

Changed:

| ID | Task | Start | Finish | Duration | Predecessors | Other |
| --- | --- | --- | --- | --- | --- | --- |
| 1 | **Criação Cervejeira Automatizada** | 2022-01-21 → 2022-01-26 (+5d) | 2022-08-22 → 2022-05-09 (-105d) | 145d → 74d |  |  |
| 2 | **1 - Definição do Projeto** | 2022-01-21 → 2022-01-26 (+5d) | 2022-01-24 → 2022-02-07 (+14d) | 2d → 9d |  |  |
| 3 | Desenho do escopo do projeto | 2022-01-21 → 2022-01-26 (+5d) | 2022-01-21 → 2022-01-28 (+7d) | 1d → 3d |  | resources Project Owner; Vinícius Bandeira; Eduardo Candido → Vinícius Bandeira; Eduardo Candido; Project Owner |
| 4 | Levantamento de recursos | 2022-01-24 → 2022-01-31 (+7d) | 2022-01-24 → 2022-02-02 (+9d) | 0.5d → 3d |  | resources Eduardo Candido; Vinícius Bandeira → Vinícius Bandeira; Eduardo Candido |
| 5 | Definição de tarefas e prazos | 2022-01-24 → 2022-02-03 (+10d) | 2022-01-24 → 2022-02-07 (+14d) | 0.5d → 3d |  |  |
| 6 | **2 - Implementação** | 2022-01-25 → 2022-01-26 (+1d) | 2022-07-29 → 2022-04-26 (-94d) | 127d → 65d |  |  |
| 7 | **2.1 - Aquisições** | 2022-01-25 → 2022-02-08 (+14d) | 2022-01-28 → 2022-02-11 (+14d) |  | 5 → none | was named Aquisição de Cervejeiras e materiais de IOT; resources Loja de Geladeira [300%]; Dispositivos IOT [300%] → none |
| 8 | Aluguel de Data Centers | 2022-01-31 → 2022-02-08 (+8d) | 2022-01-31 → 2022-02-08 (+8d) |  | 7 → 5 | was named Aquisição de Data Centers; resources Data Center → Vinícius Bandeira; Data Center |
| 9 | Aquisição de Cervejeira e Dispositivos IOT | 2022-02-01 → 2022-02-09 (+8d) | 2022-02-04 → 2022-02-11 (+7d) | 4d → 3d |  | was named Montagem do protótipo; resources Montador do Protótipo → Cervejeira; Vinícius Bandeira [50%]; Câmera [300%]; Roteador; Eduardo Candido [50%] |
| 10 | **2.2 - Desenvolvimento** | 2022-02-07 → 2022-01-26 (-12d) | 2022-04-29 → 2022-04-26 (-3d) | 60d → 65d | 9 → none | was named Desenvolvimento do Back-end; resources Equipe de Programadores → none |
| 11 | **2.2.1 - Front-end** | 2022-05-02 → 2022-02-08 (-83d) | 2022-07-22 → 2022-04-07 (-106d) | 60d → 43d | 10 → none | was named Desenvolvimento do Front-end; resources Equipe de Programadores → none |
| 12 | Desenho das telas do aplicativo | 2022-07-25 → 2022-02-08 (-167d) | 2022-07-28 → 2022-02-16 (-162d) | 3.5d → 7d | 11 → 5 | was named Treinamento da IA; resources Vinícius Bandeira; Eduardo Candido → UX Designer; Computador; Insumos de Escritório |
| 13 | Validação das telas | 2022-07-28 → 2022-02-17 (-161d) | 2022-07-29 → 2022-02-17 (-162d) | 1.5d → 1d |  | was named Testes internos de precisão; resources Eduardo Candido; Vinícius Bandeira → Vinícius Bandeira; Eduardo Candido |
| 17 | Configuração das câmeras no AWS Kinesis | 2022-08-03 → 2022-02-11 (-173d) | 2022-08-22 → 2022-02-22 (-181d) | 14d → 8d | 29 → 16 | was named Fabricação em Larga Escala; resources Montador do Protótipo → Analista; Computador; Data Center |
| 27 | **3 - Implantação** | 2022-08-01 → 2022-04-27 (-96d) | 2022-08-22 → 2022-05-09 (-105d) | 16d → 9d |  |  |
| 28 | Documentação | 2022-08-01 → 2022-04-27 (-96d) | 2022-08-01 → 2022-05-05 (-88d) | 1d → 7d | 13 → 26 | resources Vinícius Bandeira; Eduardo Candido → Insumos de Escritório; Computador; Vinícius Bandeira [50%]; Eduardo Candido [50%] |
| 29 | Publicação do Software | 2022-08-02 → 2022-05-06 (-88d) | 2022-08-02 → 2022-05-09 (-85d) | 1d → 2d |  | resources Equipe de Programadores → Analista; Computador; Data Center |

## Version 4 (saved 2022-01-27)

Note of the change: executando o projeto

Last finish 2022-05-09 → 2022-05-31 (+22d). Complete tasks 0 → 12.

Changed:

| ID | Task | Start | Finish | Duration | Complete | Other |
| --- | --- | --- | --- | --- | --- | --- |
| 1 | **Criação Cervejeira Automatizada** |  | 2022-05-09 → 2022-05-31 (+22d) | 74d → 90d | 0% → 50% | baseline start none → 2022-01-26; baseline finish none → 2022-05-09 |
| 2 | **1 - Definição do Projeto** |  | 2022-02-07 → 2022-02-09 (+2d) | 9d → 11d | 0% → 100% | baseline start none → 2022-01-26; baseline finish none → 2022-02-07 |
| 3 | Desenho do escopo do projeto |  |  |  | 0% → 100% | baseline start none → 2022-01-26; baseline finish none → 2022-01-28 |
| 4 | Levantamento de recursos |  | 2022-02-02 → 2022-02-03 (+1d) | 3d → 4d | 0% → 100% | baseline start none → 2022-01-31; baseline finish none → 2022-02-02 |
| 5 | Definição de tarefas e prazos | 2022-02-03 → 2022-02-07 (+4d) | 2022-02-07 → 2022-02-09 (+2d) |  | 0% → 100% | constraint none → start no earlier than 2022-02-05; baseline start none → 2022-02-03; baseline finish none → 2022-02-07 |
| 6 | **2 - Implementação** | 2022-01-26 → 2022-02-10 (+15d) | 2022-04-26 → 2022-05-18 (+22d) | 65d → 70d | 0% → 51% | baseline start none → 2022-01-26; baseline finish none → 2022-04-26 |
| 7 | **2.1 - Aquisições** | 2022-02-08 → 2022-02-10 (+2d) | 2022-02-11 → 2022-03-01 (+18d) | 4d → 14d | 0% → 100% | baseline start none → 2022-02-08; baseline finish none → 2022-02-11 |
| 8 | Aluguel de Data Centers | 2022-02-08 → 2022-02-10 (+2d) | 2022-02-08 → 2022-02-10 (+2d) |  | 0% → 100% | baseline start none → 2022-02-08; baseline finish none → 2022-02-08 |
| 9 | Aquisição de Cervejeira e Dispositivos IOT | 2022-02-09 → 2022-02-28 (+19d) | 2022-02-11 → 2022-03-01 (+18d) | 3d → 2d | 0% → 100% | constraint none → start no earlier than 2022-02-27; baseline start none → 2022-02-09; baseline finish none → 2022-02-11 |
| 10 | **2.2 - Desenvolvimento** | 2022-01-26 → 2022-02-23 (+28d) | 2022-04-26 → 2022-05-18 (+22d) | 65d → 61d | 0% → 49% | baseline start none → 2022-01-26; baseline finish none → 2022-04-26 |
| 11 | **2.2.1 - Front-end** | 2022-02-08 → 2022-02-23 (+15d) | 2022-04-07 → 2022-04-29 (+22d) | 43d → 48d | 0% → 44% | baseline start none → 2022-02-08; baseline finish none → 2022-04-07 |
| 12 | Desenho das telas do aplicativo | 2022-02-08 → 2022-02-28 (+20d) | 2022-02-16 → 2022-03-10 (+22d) | 7d → 9d | 0% → 100% | baseline start none → 2022-02-08; baseline finish none → 2022-02-16 |
| 13 | Validação das telas | 2022-02-17 → 2022-02-23 (+6d) | 2022-02-17 → 2022-02-25 (+8d) | 1d → 3d | 0% → 100% | constraint none → start no earlier than 2022-02-22; resources Vinícius Bandeira; Eduardo Candido → Vinícius Bandeira [50%]; Eduardo Candido [50%]; UX Designer [20%]; baseline start none → 2022-02-17; baseline finish none → 2022-02-17 |
| 14 | Criação do aplicativo mobile | 2022-02-18 → 2022-02-28 (+10d) | 2022-04-07 → 2022-04-29 (+22d) | 35d → 45d | 0% → 22% | constraint none → start no earlier than 2022-02-21; baseline start none → 2022-02-18; baseline finish none → 2022-04-07 |
| 15 | **2.2.2 - Back-end** | 2022-02-09 → 2022-02-28 (+19d) | 2022-03-23 → 2022-04-11 (+19d) |  | 0% → 77% | baseline start none → 2022-02-09; baseline finish none → 2022-03-23 |
| 16 | Criação do banco de dados dentro da AWS | 2022-02-09 → 2022-02-28 (+19d) | 2022-02-10 → 2022-03-02 (+20d) | 2d → 3d | 0% → 100% | baseline start none → 2022-02-09; baseline finish none → 2022-02-10 |
| 17 | Configuração das câmeras no AWS Kinesis | 2022-02-11 → 2022-03-02 (+19d) | 2022-02-22 → 2022-03-11 (+17d) |  | 0% → 100% | baseline start none → 2022-02-11; baseline finish none → 2022-02-22 |
| 18 | Estruturação da arquitetura serverless com AWS EventBridge | 2022-02-23 → 2022-03-16 (+21d) | 2022-03-03 → 2022-03-24 (+21d) |  | 0% → 100% | constraint none → start no earlier than 2022-03-16; baseline start none → 2022-02-23; baseline finish none → 2022-03-03 |
| 19 | Estabelecendo comunicação com AWS Lambda | 2022-03-04 → 2022-03-25 (+21d) | 2022-03-14 → 2022-03-31 (+17d) | 7d → 5d | 0% → 100% | baseline start none → 2022-03-04; baseline finish none → 2022-03-14 |
| 20 | Criação de evento para nível baixo da cervejeira | 2022-03-15 → 2022-04-01 (+17d) | 2022-03-23 → 2022-04-11 (+19d) |  |  | baseline start none → 2022-03-15; baseline finish none → 2022-03-23 |
| 21 | Vinculação do Back-end e Front-end | 2022-04-08 → 2022-05-02 (+24d) | 2022-04-13 → 2022-05-05 (+22d) |  |  | baseline start none → 2022-04-08; baseline finish none → 2022-04-13 |
| 22 | **2.2.3 - Montagem e Treinamento** | 2022-01-26 → 2022-02-28 (+33d) | 2022-04-26 → 2022-05-18 (+22d) | 65d → 58d | 0% → 29% | baseline start none → 2022-01-26; baseline finish none → 2022-04-26 |
| 23 | Montagem do protótipo da cervejeira | 2022-01-26 → 2022-02-28 (+33d) | 2022-01-28 → 2022-03-02 (+33d) |  | 0% → 100% | baseline start none → 2022-01-26; baseline finish none → 2022-01-28 |
| 24 | Treinamento de IA para as câmeras | 2022-04-14 → 2022-05-06 (+22d) | 2022-04-22 → 2022-05-16 (+24d) |  |  | baseline start none → 2022-04-14; baseline finish none → 2022-04-22 |
| 25 | Teste de precisão da IA | 2022-04-25 → 2022-05-17 (+22d) | 2022-04-25 → 2022-05-17 (+22d) |  |  | baseline start none → 2022-04-25; baseline finish none → 2022-04-25 |
| 26 | Teste de notificação de nível baixo da cervejeira | 2022-04-26 → 2022-05-18 (+22d) | 2022-04-26 → 2022-05-18 (+22d) |  |  | baseline start none → 2022-04-26; baseline finish none → 2022-04-26 |
| 27 | **3 - Implantação** | 2022-04-27 → 2022-05-19 (+22d) | 2022-05-09 → 2022-05-31 (+22d) |  |  | baseline start none → 2022-04-27; baseline finish none → 2022-05-09 |
| 28 | Documentação | 2022-04-27 → 2022-05-19 (+22d) | 2022-05-05 → 2022-05-27 (+22d) |  |  | baseline start none → 2022-04-27; baseline finish none → 2022-05-05 |
| 29 | Publicação do Software | 2022-05-06 → 2022-05-30 (+24d) | 2022-05-09 → 2022-05-31 (+22d) |  |  | baseline start none → 2022-05-06; baseline finish none → 2022-05-09 |
| 30 | Fim do projeto | 2022-05-09 → 2022-05-31 (+22d) | 2022-05-09 → 2022-05-31 (+22d) |  |  | baseline start none → 2022-05-09; baseline finish none → 2022-05-09 |
